# Proyecto panna's

Schedule from MS Project, 2019-05-09 to 2019-09-05, costs in $, A marks actual dates.
Presentacion proyecto ADSI

## Calendars

- Estándar: Mon-Fri 09:00-13:00, 15:00-19:00; Sat-Sun off. Exceptions (off unless hours are given): 2019-06-03 (Dia de la asencion), 2019-06-24 (Corpus Christi), 2019-07-01 (Sagrado Corazon ; San pedro y San pablo), 2019-07-20 (Dia de la independencia), 2019-08-07 (Batalla de boyaca), 2019-08-17 (La asuncion de la virgen).

## Resources

| Resource | Rate | Cost per use |
| --- | --- | --- |
| Programador |  |  |
| Mauricio Avila | 3450 |  |
| Oscar Torres | 3450 |  |
| Luisa Villadiego | 3450 |  |
| Johan Bohorquez | 3450 |  |
| Sergio Valiente | 3450 |  |
| Desarrollador |  |  |
| Analista |  |  |
| Equipo |  |  |
| Materiales |  |  |
| Hosting |  | 3413612 |
| Tipo costo |  |  |
| Trasporte |  | 1843200 |
| Muricio avila |  |  |

## Schedule

| ID | WBS | Task | Duration | Start | Finish | Predecessors | Complete | Remaining | Actual start | Actual finish | Total slack | Free slack | Constraint | Resources | Work | Actual work | Cost | Actual cost |
| --- | --- | --- | --- | --- | --- | --- | --- | --- | --- | --- | --- | --- | --- | --- | --- | --- | --- | --- |
| 1 | 1 | **PROYECTO ADSI** | 40d | 2019-05-09 08:00 A | 2019-07-08 18:00 |  | 52% | 19.1d |  |  |  |  |  | Mauricio Avila [25%]; Oscar Torres [25%]; Luisa Villadiego [20%]; Johan Bohorquez [20%]; Sergio Valiente [20%] | 346.45h | 35h | 1,195,252.5 | 120,750 |
| 2 | 1.1 | **Analisis** | 9d | 2019-05-09 08:00 A | 2019-05-22 00:00 |  | 52% | 4.3d |  |  | 0d |  |  |  | 67h | 35h | 231,150 | 120,750 |
| 3 | 1.1.1 | **Componente metodologico** | 9d | 2019-05-09 08:00 A | 2019-05-22 00:00 |  | 52% | 4.3d |  |  | 0d |  |  |  | 67h | 35h | 231,150 | 120,750 |
| 4 | 1.1.1.1 | Nombre del proyecto | 3h | 2019-05-09 08:00 A | 2019-05-09 12:00 A |  | 100% |  |  |  |  |  |  | Sergio Valiente | 3h | 3h | 10,350 | 10,350 |
| 5 | 1.1.1.2 | Objetivo general | 8h | 2019-05-09 18:00 A | 2019-05-10 18:00 A | 4 | 100% |  |  |  |  |  |  | Sergio Valiente | 8h | 8h | 27,600 | 27,600 |
| 6 | 1.1.1.3 | Objetivos especificos | 8h | 2019-05-10 18:00 | 2019-05-13 18:00 | 5 |  |  |  |  | 0.12d | 0d |  | Johan Bohorquez | 8h |  | 27,600 |  |
| 7 | 1.1.1.4 | Planteamiento del problema | 16h | 2019-05-13 08:00 A | 2019-05-15 00:00 | 6 | 50% | 8h |  |  | 0d |  | finish no earlier than 2019-05-15 00:00 | Johan Bohorquez | 16h | 8h | 55,200 | 27,600 |
| 8 | 1.1.1.5 | Alcance del proyecto | 16h | 2019-05-15 06:00 A | 2019-05-17 00:00 | 7 | 50% | 8h |  |  | 0d |  | finish no earlier than 2019-05-17 00:00 | Johan Bohorquez | 16h | 8h | 55,200 | 27,600 |
| 9 | 1.1.1.6 | Justificacion | 16h | 2019-05-20 06:00 A | 2019-05-22 00:00 | 8 | 50% | 8h |  |  | 0d |  | finish no earlier than 2019-05-22 00:00 | Mauricio Avila | 16h | 8h | 55,200 | 27,600 |
| 10 | 2 | **Levantamiento de informacion** | 11.12d | 2019-05-22 06:00 | 2019-06-06 17:00 |  | 30% | 7.79d | 2019-05-15 18:00 |  |  |  |  |  | 80h | 24h | 276,000 | 82,800 |
| 11 | 2.1 | Entrevistas | 30h | 2019-05-15 18:00 A | 2019-05-24 17:00 | 9 | 27% | 22h |  |  | 0d |  |  | Oscar Torres | 30h | 8h | 103,500 | 27,600 |
| 12 | 2.2 | Observacion | 20h | 2019-05-16 18:00 A | 2019-05-28 11:00 | 11 | 40% | 12h |  |  | 0d |  |  | Sergio Valiente | 20h | 8h | 69,000 | 27,600 |
| 13 | 2.3 | Encuestas | 30h | 2019-05-17 18:00 A | 2019-05-30 19:00 | 12 | 27% | 22h |  |  | 0d |  |  | Luisa Villadiego | 30h | 8h | 103,500 | 27,600 |
| 14 | 3 | **Planeacion** | 57d | 2019-05-20 18:00 A | 2019-08-13 18:00 | 2 | 15% | 48.54d |  |  | -42.88d | 0d |  |  | 155h | 23h | 534,750 | 79,350 |
| 15 | 3.1 | **Informe de requerimientos (IEEE 830)** | 57d | 2019-05-20 18:00 A | 2019-08-13 18:00 |  | 17% | 47.5d |  |  | -52d | 0d |  |  | 72h | 12h | 248,400 | 41,400 |
| 16 | 3.1.1 | Requerimientos funcionales | 16h | 2019-05-20 18:00 A | 2019-05-31 19:00 | 13 | 50% | 8h |  |  | -6.12d | 0d |  | Luisa Villadiego | 16h | 8h | 55,200 | 27,600 |
| 17 | 3.1.2 | Requerimientos no funcionales | 16h | 2019-06-04 09:00 | 2019-06-05 19:00 | 16 |  |  |  |  | -6.12d | 0d |  | Luisa Villadiego | 16h |  | 55,200 |  |
| 18 | 3.1.3 | Diagrama de casos de uso | 4h | 2019-05-21 18:00 A | 2019-05-22 12:00 A | 16, 17 | 100% |  |  |  |  |  |  | Johan Bohorquez | 4h | 4h | 13,800 | 13,800 |
| 19 | 3.1.4 | Especificacion de casos de uso (casos de uso extendido) | 36h | 2019-08-01 09:00 | 2019-08-13 18:00 | 18 |  |  |  |  | -52d | 0d | start no earlier than 2019-08-01 09:00 | Mauricio Avila | 36h |  | 124,200 |  |
| 20 | 3.2 | **Mapa de procesos** | 1d | 2019-05-22 18:00 A | 2019-05-23 18:00 |  | 100% |  |  | 2019-05-23 11:00 |  |  |  |  | 3h | 3h | 10,350 | 10,350 |
| 21 | 3.2.1 | **BPMN** | 1d | 2019-05-22 18:00 A | 2019-05-23 18:00 |  | 100% |  |  | 2019-05-23 11:00 |  |  |  |  | 3h | 3h | 10,350 | 10,350 |
| 22 | 3.2.1.1 | Diagrama de flujo de proceso | 3h | 2019-05-22 18:00 A | 2019-05-23 11:00 A | 19 | 100% |  |  |  |  |  |  | Sergio Valiente | 3h | 3h | 10,350 | 10,350 |
| 23 | 3.3 | **Modelo de entidad relacion** | 3d | 2019-05-23 18:00 A | 2019-05-28 18:00 |  | 40% | 1.8d |  |  |  |  |  |  | 20h | 8h | 69,000 | 27,600 |
| 24 | 3.3.1 | Modelo relacional | 8h | 2019-05-23 18:00 A | 2019-05-24 18:00 A | 22 | 100% |  |  |  |  |  |  | Johan Bohorquez | 8h | 8h | 27,600 | 27,600 |
| 25 | 3.3.2 | Normatizacion de la base de datos | 8h | 2019-05-24 18:00 | 2019-05-27 18:00 | 24 |  |  |  |  | -8d | 0d |  | Oscar Torres | 8h |  | 27,600 |  |
| 26 | 3.3.3 | Diccionario de datos | 4h | 2019-05-27 18:00 | 2019-05-28 12:00 | 25 |  |  |  |  | -8d | 0d | finish no earlier than 2019-05-27 00:00 | Oscar Torres | 4h |  | 13,800 |  |

| ID | WBS | Task | Duration | Start | Finish | Predecessors | Complete | Remaining | Total slack | Free slack | Constraint | Resources | Work | Actual work | Cost | Actual cost |
| --- | --- | --- | --- | --- | --- | --- | --- | --- | --- | --- | --- | --- | --- | --- | --- | --- |
| 27 | 3.4 | **Modelo logico** | 2d | 2019-05-29 09:00 | 2019-05-31 00:00 |  |  |  | -8.62d | 0d |  |  | 16h |  | 55,200 |  |
| 28 | 3.4.1 | Diagrama de clases | 16h | 2019-05-29 09:00 | 2019-05-31 00:00 | 26 |  |  | -8.62d | 0d | finish no earlier than 2019-05-31 00:00 | Mauricio Avila | 16h |  | 55,200 |  |
| 29 | 3.5 | **Prototipo no funcional del sistema** | 5d | 2019-05-31 09:00 | 2019-06-07 19:00 |  |  |  | -8.62d | 0d |  |  | 40h |  | 138,000 |  |
| 30 | 3.5.1 | Mockups de la aplicación | 40h | 2019-05-31 09:00 | 2019-06-07 19:00 | 28 |  |  | -8.62d | 0d |  | Johan Bohorquez | 40h |  | 138,000 |  |
| 31 | 3.6 | **Diagrama de distribucion** | 1d | 2019-06-10 09:00 | 2019-06-10 19:00 |  |  |  |  |  |  |  | 4h |  | 13,800 |  |
| 32 | 3.6.1 | diagrama de distribucion | 4h | 2019-06-10 09:00 | 2019-06-10 13:00 | 30 |  |  | -8.62d | 0d |  | Mauricio Avila | 4h |  | 13,800 |  |
| 33 | 4 | **Ejecucion** | 69d | 2019-05-27 18:00 A | 2019-09-05 18:00 | 14 | 26% | 51.16d | 0d |  |  |  | 232h | 60h | 800,400 | 207,000 |
| 34 | 4.1 | **Base de datos** | 56.5d | 2019-05-27 18:00 A | 2019-08-20 12:00 |  | 55% | 25.43d | 12.5d |  |  |  | 80h | 44h | 276,000 | 151,800 |
| 35 | 4.1.1 | Construcción de la Base de Datos. | 40h | 2019-05-27 18:00 A | 2019-08-16 18:00 | 32 | 40% | 24h | 0d |  |  | Luisa Villadiego | 40h | 16h | 138,000 | 55,200 |
| 36 | 4.1.2 | Datos insertados en la Base de Datos. | 20h | 2019-05-28 18:00 A | 2019-08-20 12:00 | 35 | 40% | 12h | 12.5d |  |  | Oscar Torres | 20h | 8h | 69,000 | 27,600 |
| 37 | 4.1.3 | Consultas y Joins en la Base de Datos. | 20h | 2019-05-29 18:00 A | 2019-06-04 12:00 A | 36 | 100% |  |  |  |  | Luisa Villadiego | 20h | 20h | 69,000 | 69,000 |
| 38 | 4.2 | **Interfaz grafica de usuario** | 10d | 2019-08-13 18:00 | 2019-08-27 18:00 |  |  |  | 0d |  |  |  | 80h |  | 276,000 |  |
| 39 | 4.2.1 | Maquetacion de la aplicación(HTML) | 60h | 2019-08-13 18:00 | 2019-08-23 12:00 | 37 |  |  | 0d |  |  | Sergio Valiente | 60h |  | 207,000 |  |
| 40 | 4.2.2 | Implementacion de estilos | 20h | 2019-08-23 12:00 | 2019-08-27 18:00 | 39 |  |  | 0d |  |  | Sergio Valiente | 20h |  | 69,000 |  |
| 41 | 4.3 | **Codificación y manejo de CRUD.** | 8d | 2019-05-31 18:00 A | 2019-06-13 18:00 |  | 50% | 4d |  |  |  |  | 32h | 16h | 110,400 | 55,200 |
| 42 | 4.3.1 | Conexión base de datos. | 32h | 2019-05-31 18:00 A | 2019-08-29 18:00 | 40 | 50% | 16h | 0d |  |  | Johan Bohorquez | 32h | 16h | 110,400 | 55,200 |
| 43 | 4.4 | **Crud funcional módulos del sistema.** | 5d | 2019-08-29 18:00 | 2019-09-05 18:00 |  |  |  | 0d |  |  |  | 40h |  | 138,000 |  |
| 44 | 4.4.1 | CU001:Iniciar sesion | 2h | 2019-08-29 18:00 | 2019-08-30 10:00 | 42 |  |  | 0d |  |  | Mauricio Avila | 2h |  | 6,900 |  |
| 45 | 4.4.2 | CU002: Registrar usuario en el sistema | 2h | 2019-08-30 10:00 | 2019-08-30 12:00 | 44 |  |  | 0d |  |  | Mauricio Avila | 2h |  | 6,900 |  |
| 46 | 4.4.3 | CU003:Registrar la solicitud de atencion domiciliaria | 3h | 2019-08-30 12:00 | 2019-08-30 17:00 | 45 |  |  | 0d |  |  | Mauricio Avila | 3h |  | 10,350 |  |
| 47 | 4.4.4 | CU004:Cambiar contraseña | 1h | 2019-08-30 17:00 | 2019-08-30 18:00 | 46 |  |  | 0d |  |  | Mauricio Avila | 1h |  | 3,450 |  |
| 48 | 4.4.5 | CU005:Cerrar sesion | 1h | 2019-08-30 18:00 | 2019-08-30 19:00 | 47 |  |  | 0d |  |  | Mauricio Avila | 1h |  | 3,450 |  |
| 49 | 4.4.6 | CU006:Crear el historial medico | 3h | 2019-09-02 09:00 | 2019-09-02 12:00 | 48 |  |  | 0d |  |  | Johan Bohorquez | 3h |  | 10,350 |  |
| 50 | 4.4.7 | CU007:Consultar el historial medico | 2h | 2019-09-02 12:00 | 2019-09-02 16:00 | 49 |  |  | 0d |  |  | Johan Bohorquez | 2h |  | 6,900 |  |
| 51 | 4.4.8 | CU008:Actualizar el historial medico con el diagnostico | 1h | 2019-09-02 16:00 | 2019-09-02 17:00 | 50 |  |  | 0d |  |  | Johan Bohorquez | 1h |  | 3,450 |  |
| 52 | 4.4.9 | CU009:Asignar medicamentos, examenes y formulas medicas | 3h | 2019-09-02 17:00 | 2019-09-03 10:00 | 51 |  |  | 0d |  |  | Johan Bohorquez | 3h |  | 10,350 |  |
| 53 | 4.4.10 | CU010:Diligenciar la receta de medicamentos | 2h | 2019-09-03 10:00 | 2019-09-03 12:00 | 52 |  |  | 0d |  |  | Oscar Torres | 2h |  | 6,900 |  |
| 54 | 4.4.11 | CU011:Subir evidenca de la receta medica como archivos scanner | 2h | 2019-09-03 12:00 | 2019-09-03 16:00 | 53 |  |  | 0d |  |  | Oscar Torres | 2h |  | 6,900 |  |
| 55 | 4.4.12 | CU012:Mostrar las evidencias guardadas cuando se solicite | 2h | 2019-09-03 16:00 | 2019-09-03 18:00 | 54 |  |  | 0d |  |  | Oscar Torres | 2h |  | 6,900 |  |
| 56 | 4.4.13 | CU013:Consultar medicamento requerido para la situacion y su disponibilidad | 3h | 2019-09-03 18:00 | 2019-09-04 11:00 | 55 |  |  | 0d |  |  | Oscar Torres | 3h |  | 10,350 |  |
| 57 | 4.4.14 | CU014:Buscar a un cliente en el sistema | 1h | 2019-09-04 11:00 | 2019-09-04 12:00 | 56 |  |  | 0d |  |  | Oscar Torres | 1h |  | 3,450 |  |
| 58 | 4.4.15 | CU015:Consultar la informacion del cliente solicitado | 1h | 2019-09-04 12:00 | 2019-09-04 13:00 | 57 |  |  | 0d |  |  | Sergio Valiente | 1h |  | 3,450 |  |
| 59 | 4.4.16 | CU016: Deshabilitar la informacion del cliente | 2h | 2019-09-04 15:00 | 2019-09-04 17:00 | 58 |  |  | 0d |  |  | Sergio Valiente | 2h |  | 6,900 |  |
| 60 | 4.4.17 | CU017:Anexar archivos necesarios | 2h | 2019-09-04 17:00 | 2019-09-04 19:00 | 59 |  |  | 0d |  |  | Sergio Valiente | 2h |  | 6,900 |  |
| 61 | 4.4.18 | CU018:Actualizar o modificar archivos anexados | 2h | 2019-09-05 09:00 | 2019-09-05 11:00 | 60 |  |  | 0d |  |  | Sergio Valiente | 2h |  | 6,900 |  |
| 62 | 4.4.19 | CU019: Crear historial de insumos | 1h | 2019-09-05 11:00 | 2019-09-05 12:00 | 61 |  |  | 0d |  |  | Luisa Villadiego | 1h |  | 3,450 |  |
| 63 | 4.4.20 | CU020: Vehiculo | 1h | 2019-09-05 12:00 | 2019-09-05 13:00 | 62 |  |  | 0d |  |  | Luisa Villadiego | 1h |  | 3,450 |  |
| 64 | 4.4.21 | CU021: Administrativo | 2h | 2019-09-05 15:00 | 2019-09-05 17:00 | 63 |  |  | 0d |  |  | Luisa Villadiego | 2h |  | 6,900 |  |
| 65 | 4.4.22 | CU022: Usuario | 1h | 2019-09-05 17:00 | 2019-09-05 18:00 | 64 |  |  | 0d |  |  | Luisa Villadiego | 1h |  | 3,450 |  |

| ID | WBS | Task | Duration | Start | Finish | Predecessors | Complete | Remaining | Actual finish | Total slack | Resources | Work | Actual work | Cost | Actual cost |
| --- | --- | --- | --- | --- | --- | --- | --- | --- | --- | --- | --- | --- | --- | --- | --- |
| 66 | 5 | **Evaluacion** | 8d | 2019-06-13 18:00 A | 2019-06-26 18:00 |  | 70% | 2.37d |  |  |  | 27h | 19h | 93,150 | 65,550 |
| 67 | 5.1 | Modelo De Calidad | 19h | 2019-06-13 18:00 A | 2019-06-18 11:00 A | 65 | 100% |  |  |  | Johan Bohorquez | 19h | 19h | 65,550 | 65,550 |
| 68 | 5.2 | Gestion de pruebas | 8h | 2019-06-18 11:00 | 2019-06-19 11:00 | 67 |  |  |  | 74.38d | Mauricio Avila | 8h |  | 27,600 |  |
| 69 | 6 | **Construcción de manuales** | 5d | 2019-06-13 18:00 A | 2019-06-20 18:00 |  | 100% |  | 2019-06-19 13:00 |  |  | 28h | 28h | 96,600 | 96,600 |
| 70 | 6.1 | Usuario | 15h | 2019-06-13 18:00 A | 2019-06-17 17:00 A | 68 | 100% |  |  |  | Luisa Villadiego | 15h | 15h | 51,750 | 51,750 |
| 71 | 6.2 | Operación. | 13h | 2019-06-17 18:00 A | 2019-06-19 13:00 A | 70 | 100% |  |  |  | Oscar Torres | 13h | 13h | 44,850 | 44,850 |
